# H2_House

Schedule from Primavera P6, 2026-04-06 to 2027-03-28, data date 2026-06-30, costs in INR, A marks actual dates.

## Calendars

- H2_house: Mon-Fri 08:00-16:00; Sat-Sun off.
- Guardsroom: Mon-Thu 08:00-16:00; Fri off; Sat-Sun 08:00-16:00.

## Resources

| Resource | Group | Rate |
| --- | --- | --- |
| Laborer-Construction | labor | 3220 |
| excavator | equipment |  |
| Mate | labor |  |
| Mazdoor_H1 | labor |  |
| Carpenter | labor |  |
| Bhisti | labor |  |
| Mixer | equipment |  |
| Mixer operator | labor |  |
| Vibrator | equipment |  |
| Vanessa Lafferty | labor | 9660 |
| Concrete pump | equipment |  |
| Electrician Crew 5 person | labor |  |
| Plumbing -crew 4 person | labor |  |
| Paintcrew | labor |  |

## Schedule

| ID | WBS | Activity | Type | Duration | Start | Finish | Predecessors | Complete | Remaining | Planned start | Planned finish | Total float | Free float | Calendar | Resources | Cost | Actual cost |
| --- | --- | --- | --- | --- | --- | --- | --- | --- | --- | --- | --- | --- | --- | --- | --- | --- | --- |
| A001 |  | Mobilization at site |  | 3d | 2026-04-06 A | 2026-04-09 A |  | 100% |  |  |  |  |  |  | Laborer-Construction [30 h] | 676,200 | 676,200 |
| A002 |  | Surveying and layout |  | 2d | 2026-04-07 A | 2026-04-09 A | A001 FF, A001 SS | 100% |  |  |  |  |  |  | Laborer-Construction [20 h] | 64,400 | 64,400 |
| A022 |  | Finish_Milestone | milestone | 0d | 2027-03-28 | 2027-03-28 | A1070 FF, A154 FF, A557 FF, A567 FF |  |  |  |  | 0d |  | Guardsroom |  |  |  |
|  | 1 | **Foundation** |  |  | 2026-04-08 | 2026-05-11 |  |  |  |  |  |  |  |  |  |  |  |
| A003 |  | Excavation for Plinth Beams, Foundation, Septic Tank |  | 1d | 2026-04-08 A | 2026-04-09 A | A002 FF, A002 SS | 100% |  |  |  |  |  |  | excavator [10 h]; Mate [8 h] |  |  |
| A003.5 |  | Excavation_milestone | milestone | 0d | 2026-04-09 A | 2026-04-09 A | A003 FF | 100% |  |  |  |  |  |  |  |  |  |
| A004 |  | Form Work for PCC of Footings and Plinth Beams |  | 1d | 2026-04-09 A | 2026-04-10 A | A003, A003.5 | 100% |  |  |  |  |  |  | Mazdoor_H1 [10 h]; Mazdoor_H1 [16 h]; Carpenter [16 h] |  |  |
| A005 |  | PCC for Footings, Plinth Beams and Septic Tank |  | 1d | 2026-04-13 A | 2026-04-14 A | A004 | 100% |  |  |  |  |  |  | Mate [10 h]; Mazdoor_H1 [8 h]; Bhisti [8 h]; Mixer [8 h]; Mixer operator [8 h]; Vibrator [8 h] |  |  |
| A006 |  | Reinforcement for Footings, Plinth Beams and Septic Tank |  | 2d | 2026-04-13 A | 2026-05-05 | A005 SS, A005 FF |  | 2d | 2026-04-13 | 2026-04-15 | 3d | 0d |  | Laborer-Construction [20 h]; Vanessa Lafferty [20 h] | 257,600 | 64,400 |
| A007 |  | Shuttering for Footings, Plinth Beams and Septic Tank |  | 1d | 2026-04-14 A | 2026-04-15 A | A006 FF, A006 SS | 100% |  |  |  |  |  |  | Carpenter [8 h]; Mazdoor_H1 [8 h] |  |  |
| A008 |  | RCC for Footings, Plinth Beams and Septic Tank |  | 1d | 2026-04-15 A | 2026-04-16 A | A007 | 100% |  |  |  |  |  |  | Mate [30 h]; Mazdoor_H1 [24 h]; Bhisti [24 h]; Mixer [24 h]; Mixer operator [24 h]; Vibrator [24 h]; Bhisti [8 h] |  |  |
| A009 |  | Deshuttering of Footings, Plinth Beams and Septic Tank |  | 1d | 2026-04-16 A | 2026-04-17 A | A008 | 100% |  |  |  |  |  |  | Mazdoor_H1 [10 h]; Mazdoor_H1 [8 h] |  |  |
| A010 |  | Reinforcement for Columns upto GL |  | 1d | 2026-04-20 A | 2026-04-21 A | A009 | 100% |  |  |  |  |  |  | Laborer-Construction [30 h] | 193,200 | 193,200 |
| A011 |  | Shuttering for Columns upto GL |  | 1d | 2026-04-21 A | 2026-04-22 A | A010 | 100% |  |  |  |  |  |  | Carpenter [40 h]; Carpenter [8 h]; Mazdoor_H1 [8 h] |  |  |
| A012 |  | RCC for columns upto GL |  | 1d | 2026-04-22 A | 2026-04-23 A | A011 | 100% |  |  |  |  |  |  | Mazdoor_H1 [8 h]; Mixer [8 h]; Mixer operator [8 h]; Bhisti [8 h]; Vibrator [8 h]; Mate [8 h] |  |  |
| A013 |  | Deshuttering of Columns upto GL |  | 2d | 2026-04-23 A | 2026-04-28 A | A012 | 100% |  |  |  |  |  |  | Mazdoor_H1 [40 h]; Mazdoor_H1 [16 h] |  |  |
| A016 |  | Water Proofing the Brick work upto GL |  | 2d | 2026-05-01 A | 2026-05-05 A |  | 100% |  |  |  |  |  |  | Laborer-Construction [20 h] | 128,800 | 128,800 |
| A017 |  | Back Filling and Compacting |  | 3d | 2026-05-05 A | 2026-05-11 A | A016 | 100% |  |  |  |  |  |  | Laborer-Construction [30 h] | 193,200 | 193,200 |
| A017.5 |  | Below_GL_Milestone | milestone | 0d | 2026-05-11 A | 2026-05-11 A | A017 FF | 100% |  |  |  |  |  |  |  |  |  |
|  | 2 | **Civil_work_Upto 1st Roof** |  |  | 2026-05-11 | 2026-09-21 |  |  |  |  |  |  |  |  |  |  |  |
| A025 |  | Reinforcemnt for GF Columns of ht 2mt |  | 2d | 2026-05-11 A | 2026-05-13 A | A017.5, A013 | 100% |  |  |  |  |  |  | Mazdoor_H1 [60 h]; Mazdoor_H1 [16 h] |  |  |
| A026 |  | Shuttering for GF Columns of ht 2mt |  | 2d | 2026-05-13 A | 2026-05-18 A | A025 | 100% |  |  |  |  |  |  | Mazdoor_H1 [40 h]; Mazdoor_H1 [16 h]; Carpenter [16 h] |  |  |
| A027 |  | RCC for for GF Columns of ht 2mt |  | 1d | 2026-05-18 A | 2026-05-19 A | A026 | 100% |  |  |  |  |  |  | Mate [80 h]; Mazdoor_H1 [8 h]; Mixer [8 h]; Mixer operator [8 h]; Vibrator [8 h] |  |  |
| A028 |  | Deshuttering for GF Columns of ht 2mt |  | 2d | 2026-05-25 A | 2026-05-27 A | A027 FS+3d | 100% |  |  |  |  |  |  | Mazdoor_H1 [40 h]; Mazdoor_H1 [8 h] |  |  |
| A127 |  | Wall_upto_lintel_GF |  | 2d | 2026-05-27 A | 2026-06-01 A | A028 | 100% |  |  |  |  |  |  | Mate [16 h]; Mazdoor_H1 [16 h] |  |  |
| A097 |  | Lintel_shuttering GF |  | 1d | 2026-06-01 A | 2026-06-02 A | A127 | 100% |  |  |  |  |  |  | Mate [32 h]; Mazdoor_H1 [32 h] |  |  |
| A107 |  | Lintel_reinforcement GF |  | 1d | 2026-06-02 A | 2026-06-03 A | A097 | 100% |  |  |  |  |  |  | Mate [8 h]; Mazdoor_H1 [8 h] |  |  |
| A117 |  | Lintel_RCC GF |  | 1d | 2026-06-03 A | 2026-06-04 A | A107 | 100% |  |  |  |  |  |  | Mazdoor_H1 [32 h]; Mate [32 h]; Concrete pump [32 h] |  |  |
| A137 |  | Lintel_deshuttering_GF |  | 1d | 2026-06-05 A | 2026-06-08 A | A117 | 100% |  |  |  |  |  |  | Mazdoor_H1 [8 h] |  |  |
| A157 |  | Reinforcement_Cpolumn_upto_FF_Slab |  | 1d | 2026-06-08 A | 2026-06-09 A | A117, A137 | 100% |  |  |  |  |  |  | Mate [8 h]; Mazdoor_H1 [8 h] |  |  |
| A147 |  | Shuttering_Columns_upto_FF_slab |  | 1d | 2026-06-09 A | 2026-06-10 A | A157 | 100% |  |  |  |  |  |  | Mazdoor_H1 [8 h]; Carpenter [8 h] |  |  |
| A167 |  | Column_RCC _upto_FF_SLab |  | 1d | 2026-06-10 A | 2026-06-11 A | A147 | 100% |  |  |  |  |  |  | Concrete pump [8 h] |  |  |
| A030 |  | Shuttering for Staircase upto FF Slab |  | 1d | 2026-06-12 A | 2026-06-15 A | A167 | 100% |  |  |  |  |  |  | Mazdoor_H1 [60 h]; Mazdoor_H1 [8 h]; Carpenter [8 h] |  |  |
| A031 |  | Reinforcement for Staircase upto FF Slab |  | 1d | 2026-06-15 A | 2026-06-16 A | A030 | 100% |  |  |  |  |  |  | Mazdoor_H1 [40 h]; Mate [8 h]; Mazdoor_H1 [8 h] |  |  |
| A032 |  | RCC for Staircase upto FF Slab |  | 1d | 2026-06-16 A | 2026-06-17 A | A031 | 100% |  |  |  |  |  |  | Concrete pump [8 h]; Mate [8 h]; Mazdoor_H1 [8 h] |  |  |
| A033 |  | Deshuttering for Staircase upto FF Slab |  | 2d | 2026-06-17 A | 2026-06-22 A | A032 | 100% |  |  |  |  |  |  | Mazdoor_H1 [40 h]; Mazdoor_H1 [16 h] |  |  |
| A177 |  | CColumn_deshuttering_FF_Slab |  | 1d | 2026-06-19 A | 2026-06-22 A | A167 FS+4d | 100% |  |  |  |  |  |  | Mazdoor_H1 [8 h] |  |  |
| A033.5 |  | GF_column_milestone | milestone | 0d | 2026-06-22 A | 2026-06-22 A | A033 FF | 100% |  |  |  |  |  |  |  |  |  |
| A034 |  | Shuttering for FF Beams and Slab |  | 4d | 2026-06-22 A | 2026-06-29 A | A033, A033.5, A177 | 100% |  |  |  |  |  |  | Mazdoor_H1 [80 h]; Mazdoor_H1 [32 h]; Carpenter [32 h] |  |  |
| A035 |  | Reinforcement for FF Beams and Slab |  | 4d | 2026-06-22 A | 2026-06-29 A | A034 FF, A034 SS | 100% |  |  |  |  |  |  | Mate [80 h]; Mate [32 h]; Mazdoor_H1 [32 h] |  |  |
| A036 |  | RCC for FF Beams and Slab |  | 2d | 2026-06-29 A | 2026-07-01 | A035 | 30% | 1.4d |  |  | 0d |  |  | Concrete pump [32 h]; Vibrator [32 h]; Mixer [32 h]; Mazdoor_H1 [80 h]; Mazdoor_H1 [16 h]; Mate [16 h] |  |  |
| A037 |  | Deshuttering of FF Beams and Slab |  | 4d | 2026-08-05 | 2026-08-12 | A036 FS+20d |  |  |  |  | 71d | 0d |  | Mazdoor_H1 [80 h]; Mazdoor_H1 [32 h] |  |  |
| A187 |  | Walls_upto_FF_SLAB |  | 1d | 2026-08-12 | 2026-08-13 | A037 |  |  |  |  | 71d | 0d |  | Mate [8 h]; Mazdoor_H1 [8 h] |  |  |
| A397 |  | Floor_concreting_GF_PCC |  | 1d | 2026-08-24 | 2026-08-25 | A094, A017 |  |  |  |  | 71d | 0d |  | Mixer [8 h]; Mazdoor_H1 [8 h]; Mate [8 h] |  |  |
| A447 |  | TOILET_floor_concreting_GF |  | 1d | 2026-09-18 | 2026-09-21 | A1000 |  |  |  |  | 71d | 0d |  | Mixer [8 h]; Mazdoor_H1 [8 h]; Mate [8 h] |  |  |

Notes:
- A007: Remark: formwork and shuttering is same as per IS code
- A009: Remark: assuming Double the productivity for deshuttering
- A028: Remark: Assuming same productivity as shttering of columns for mazdoors
- A397: Remark: Excluding_toilet_floor

| ID | WBS | Activity | Type | Duration | Start | Finish | Predecessors | Total float | Free float | Resources |
| --- | --- | --- | --- | --- | --- | --- | --- | --- | --- | --- |
|  | A1.3 | **Civil_work_upto_2nd_floor** |  |  | 2026-07-08 | 2026-10-20 |  |  |  |  |
| A038 |  | Reinforcemnt for FF Columns of ht 2mt |  | 3d | 2026-07-08 | 2026-07-14 | A036 FS+4d | 0d |  | Mate [60 h]; Mazdoor_H1 [24 h] |
| A039 |  | Shuttering for FF Columns of ht 2mt |  | 2d | 2026-07-14 | 2026-07-16 | A038 | 0d |  | Carpenter [40 h]; Carpenter [16 h]; Mazdoor_H1 [16 h] |
| A040 |  | RCC for for FF Columns of ht 2mt |  | 1d | 2026-07-17 | 2026-07-20 | A039 | 0d |  | Mate [32 h]; Mazdoor_H1 [32 h]; Mixer [32 h]; Mixer operator [32 h]; Vibrator [32 h] |
| A041 |  | Deshuttering for FF Columns of ht 2mt |  | 2d | 2026-07-22 | 2026-07-27 | A040 FS+2d | 0d |  | Mazdoor_H1 [40 h]; Mazdoor_H1 [16 h] |
| A227 |  | Wall_upto_lintel_FF |  | 2d | 2026-07-27 | 2026-07-29 | A041 | 0d |  | Mate [16 h]; Mazdoor_H1 [16 h] |
| A197 |  | Lintel_shuttering FF |  | 1d | 2026-07-29 | 2026-07-30 | A227 | 0d |  | Mate [8 h]; Mazdoor_H1 [8 h] |
| A207 |  | Lintel_reinforcement FF |  | 1d | 2026-07-31 | 2026-08-03 | A197 | 0d |  | Mate [8 h]; Mazdoor_H1 [8 h] |
| A217 |  | Lintel_RCC FF |  | 1d | 2026-08-03 | 2026-08-04 | A207 | 0d |  | Mate [8 h]; Mazdoor_H1 [8 h]; Concrete pump [8 h] |
| A237 |  | Lintel_deshuttering_FF |  | 1d | 2026-08-04 | 2026-08-05 | A217 | 0d |  | Mazdoor_H1 [8 h] |
| A257 |  | Reinforcement_Cpolumn_upto_SF_Slab |  | 1d | 2026-08-05 | 2026-08-06 | A237 | 0d |  | Mate [8 h]; Mazdoor_H1 [8 h] |
| A247 |  | Shuttering_Columns_upto_SF_slab |  | 1d | 2026-08-07 | 2026-08-10 | A257 | 0d |  | Mazdoor_H1 [32 h]; Carpenter [32 h] |
| A267 |  | Column_RCC _upto_SF_SLab |  | 1d | 2026-08-10 | 2026-08-11 | A247 | 0d |  | Concrete pump [32 h]; Mate [32 h] |
| A043 |  | Shuttering for Staircase upto SF Slab |  | 1d | 2026-08-11 | 2026-08-12 | A267 | 0d |  | Carpenter [60 h]; Carpenter [24 h]; Mazdoor_H1 [24 h] |
| A044 |  | Reinforcement for Staircase upto SF Slab |  | 1d | 2026-08-12 | 2026-08-13 | A043 | 0d |  | Mazdoor_H1 [40 h]; Mazdoor_H1 [8 h]; Mate [8 h] |
| A045 |  | RCC for Staircase upto SF Slab |  | 1d | 2026-08-14 | 2026-08-17 | A044 | 0d |  | Concrete pump [8 h]; Mazdoor_H1 [40 h]; Mate [8 h]; Mazdoor_H1 [8 h] |
| A046 |  | Deshuttering for Staircase upto SF Slab |  | 1d | 2026-08-18 | 2026-08-19 | A045 FS+1d | 0d |  | Mazdoor_H1 [40 h]; Mazdoor_H1 [8 h] |
| A277 |  | CColumn_deshuttering_SF_Slab |  | 1d | 2026-08-18 | 2026-08-19 | A267 FS+4d | 0d |  | Mazdoor_H1 [8 h] |
| A046.5 |  | FF_column_milestone | milestone | 0d | 2026-08-19 | 2026-08-19 | A046 FF | 0d |  |  |
| A047 |  | Shuttering for SF Beams and Slab |  | 4d | 2026-08-19 | 2026-08-26 | A046, A046.5, A277 | 0d |  | Carpenter [80 h]; Carpenter [32 h]; Mazdoor_H1 [32 h] |
| A048 |  | Reinforcement for SF Beams and Slab |  | 4d | 2026-08-26 | 2026-09-02 | A047 | 0d |  | Mate [80 h]; Mate [32 h]; Mazdoor_H1 [32 h] |
| A049 |  | RCC for SF Beams and Slab |  | 2d | 2026-09-02 | 2026-09-07 | A048 | 0d |  | Mazdoor_H1 [80 h]; Mazdoor_H1 [32 h]; Concrete pump [32 h]; Mixer [32 h]; Mixer operator [32 h]; Mate [32 h]; Vibrator [32 h] |
| A050 |  | Deshuttering of SF Beams and Slab |  | 4d | 2026-10-12 | 2026-10-19 | A049 FS+20d | 29d | 0d | Mazdoor_H1 [80 h]; Mazdoor_H1 [32 h] |
| A287 |  | Walls_upto_SF_SLAB |  | 1d | 2026-10-19 | 2026-10-20 | A050 | 29d | 0d | Mate [8 h]; Mazdoor_H1 [8 h] |

| ID | WBS | Activity | Type | Duration | Start | Finish | Predecessors | Total float | Resources |
| --- | --- | --- | --- | --- | --- | --- | --- | --- | --- |
|  | 4 | **Civil_work_upto_terrace** |  |  | 2026-09-15 | 2026-12-28 |  |  |  |
| A051 |  | Reinforcemnt for SF Columns of ht 2mt |  | 3d | 2026-09-15 | 2026-09-21 | A049 FS+5d | 0d | Mate [60 h]; Mazdoor_H1 [24 h] |
| A052 |  | Shuttering for SF Columns of ht 2mt |  | 2d | 2026-09-21 | 2026-09-23 | A051 | 0d | Mazdoor_H1 [40 h]; Mazdoor_H1 [16 h]; Carpenter [16 h] |
| A053 |  | RCC for for SF Columns of ht 2mt |  | 1d | 2026-09-23 | 2026-09-24 | A052 | 0d | Mixer [32 h]; Mixer operator [80 h]; Vibrator [32 h]; Mate [32 h]; Mazdoor_H1 [32 h] |
| A054 |  | Deshuttering for SF Columns of ht 2mt |  | 2d | 2026-09-29 | 2026-10-01 | A053 FS+2d | 0d | Mazdoor_H1 [40 h]; Mazdoor_H1 [16 h] |
| A327 |  | Wall_upto_lintel_SF |  | 2d | 2026-10-02 | 2026-10-06 | A054 | 0d | Mate [32 h]; Mazdoor_H1 [32 h] |
| A297 |  | Lintel_shuttering SF |  | 1d | 2026-10-06 | 2026-10-07 | A327 | 0d | Mate [32 h]; Mazdoor_H1 [8 h] |
| A307 |  | Lintel_reinforcement SF |  | 1d | 2026-10-07 | 2026-10-08 | A297 | 0d | Mate [8 h]; Mazdoor_H1 [8 h] |
| A317 |  | Lintel_RCC SF |  | 1d | 2026-10-09 | 2026-10-12 | A307 | 0d | Mate [32 h]; Concrete pump [32 h]; Mazdoor_H1 [32 h] |
| A337 |  | Lintel_deshuttering_SF |  | 1d | 2026-10-12 | 2026-10-13 | A317 | 0d | Mate [8 h]; Mazdoor_H1 [8 h] |
| A357 |  | Reinforcement_Cpolumn_upto_Terrace_Slab |  | 1d | 2026-10-13 | 2026-10-14 | A337 | 0d | Mate [8 h]; Mazdoor_H1 [8 h] |
| A347 |  | Shuttering_Columns_upto_Terrace_slab |  | 1d | 2026-10-14 | 2026-10-15 | A357 | 0d | Carpenter [8 h]; Mazdoor_H1 [8 h] |
| A367 |  | Column_RCC _upto_Terrace_SLab |  | 1d | 2026-10-16 | 2026-10-19 | A347 | 0d | Concrete pump [8 h]; Mazdoor_H1 [8 h]; Mate [8 h] |
| A377 |  | CColumn_deshuttering_upto_Terrace_Slab |  | 1d | 2026-10-26 | 2026-10-27 | A367 FS+4d | 0d | Mazdoor_H1 [32 h] |
| A056 |  | Shuttering for Staircase upto Terrace Slab |  | 1d | 2026-10-27 | 2026-10-28 | A377 | 0d | Carpenter [60 h]; Carpenter [24 h]; Mazdoor_H1 [24 h] |
| A057 |  | Reinforcement for Staircase upto Terrace Slab |  | 1d | 2026-10-28 | 2026-10-29 | A056 | 0d | Mate [40 h]; Mazdoor_H1 [16 h] |
| A058 |  | RCC for Staircase upto Terrace Slab |  | 1d | 2026-10-30 | 2026-11-02 | A057 | 0d | Concrete pump [16 h]; Mazdoor_H1 [40 h]; Mate [16 h] |
| A059 |  | Deshuttering for Staircase upto Terrace Slab |  | 1d | 2026-11-06 | 2026-11-09 | A058 FS+3d | 0d | Mazdoor_H1 [40 h]; Mazdoor_H1 [8 h] |
| A059.5 |  | SF_column_milestone | milestone | 0d | 2026-11-09 | 2026-11-09 | A059 FF | 0d |  |
| A060 |  | Shuttering for Terrace Beams and Slab |  | 2d | 2026-11-09 | 2026-11-11 | A059 SS, A059 FF, A059.5 | 0d | Carpenter [80 h]; Carpenter [16 h]; Mazdoor_H1 [16 h] |
| A061 |  | Reinforcement for Terrace Beams and Slab |  | 4d | 2026-11-09 | 2026-11-16 | A060 SS, A060 FF | 0d | Mate [80 h]; Mate [32 h]; Mazdoor_H1 [32 h] |
| A062 |  | RCC for Terrace Beams and Slab |  | 1d | 2026-11-16 | 2026-11-17 | A061 | 0d | Mixer [32 h]; Mixer operator [80 h]; Mate [8 h]; Mazdoor_H1 [8 h] |
| A567 |  | Terrace_parrapet |  | 2d | 2026-11-17 | 2026-11-19 | A062 | 72.8d | Mate [32 h]; Mazdoor_H1 [16 h] |
| A063 |  | Deshuttering of Terrace Beams and Slab |  | 2d | 2026-12-22 | 2026-12-24 | A062 FS+20d | 0d | Mazdoor_H1 [80 h]; Mazdoor_H1 [16 h] |
| A387 |  | Walls_upto_Terrace_SLAB |  | 1d | 2026-12-25 | 2026-12-28 | A063 | 0d | Mate [8 h]; Mazdoor_H1 [8 h] |

| ID | WBS | Activity | Duration | Start | Finish | Predecessors | Total float | Free float | Calendar | Resources | Remark |
| --- | --- | --- | --- | --- | --- | --- | --- | --- | --- | --- | --- |
|  | 3 | **Finishing_works** |  | 2026-08-25 | 2027-03-28 |  |  |  |  |  |  |
| A407 |  | Plastering_inside_GF | 8d | 2026-08-25 | 2026-09-08 | A397 | 71d | 0d |  | Mate [64 h]; Mazdoor_H1 [64 h]; Bhisti [64 h] |  |
| A457 |  | Cieling_painting_GF | 6d | 2026-09-25 | 2026-10-06 | A407 FS+10d, A447 FS+3d | 71d | 0d |  | Paintcrew [240 h] |  |
| A487 |  | 1st_coat_painting_walls_GF | 8d | 2026-10-06 | 2026-10-20 | A457 | 71d | 0d |  | Paintcrew [560 h] |  |
| A417 |  | Plastering_inside_FF | 8d | 2026-11-02 | 2026-11-16 | A1030 | 29d | 0d |  | Bhisti [32 h]; Mate [32 h]; Mazdoor_H1 [32 h] |  |
| A467 |  | Cieling_Painting_FF | 6d | 2026-12-02 | 2026-12-14 | A417 FS+10d, A1050 FS+3d | 29d | 0d |  | Paintcrew [160 h] |  |
| A497 |  | 1st_coat_painting_walls_FF | 8d | 2026-12-14 | 2026-12-28 | A467 | 29d | 0d |  | Paintcrew [600 h] |  |
| A437 |  | Plastering_outside_All Floors | 10d | 2026-12-25 | 2027-01-12 | A063 | 19d | 0d |  | Bhisti [80 h]; Mate [80 h]; Mazdoor_H1 [80 h] | Top to botttom |
| A427 |  | Plastering_inside_SF | 3d | 2027-01-08 | 2027-01-13 | A1040 | 0d |  |  | Mate [24 h]; Mazdoor_H1 [24 h]; Bhisti [24 h] |  |
| A547 |  | Outside_all_coats_painting | 10d | 2027-01-29 | 2027-02-16 | A437 FS+10d | 19d |  |  | Paintcrew [400 h] |  |
| A477 |  | Cieling_painting_SF | 3d | 2027-02-01 | 2027-02-04 | A427 FS+10d, A1060 FS+3d | 0d |  |  | Paintcrew [120 h] |  |
| A507 |  | 1st_coat_painting_walls_SF | 3d | 2027-02-05 | 2027-02-10 | A477 | 0d |  |  | Paintcrew [120 h] |  |
| A537 |  | Finsihing_coat_painting_SF | 2d | 2027-02-24 | 2027-03-01 | A075 | 12d |  |  | Paintcrew [80 h] |  |
| A527 |  | Finishing_coat_painting_FF | 8d | 2027-03-02 | 2027-03-16 | A074 | 3d |  |  | Paintcrew [320 h] |  |
| A517 |  | Finsihing_coat_painting_GF | 8d | 2027-03-08 | 2027-03-22 | A073 | 0d |  |  | Paintcrew [320 h] |  |
| A557 |  | Doors_and_window | 4d | 2027-03-22 | 2027-03-28 | A517, A527, A537, A547 | 0d |  | Guardsroom | Carpenter [32 h] |  |
|  | A1.5 | **Electrical_work** |  | 2026-08-14 | 2027-03-24 |  |  |  |  |  |  |
| A094 |  | Electrical_wall_cutting_Pipe_fitting GF | 5d | 2026-08-14 | 2026-08-24 | A187 | 71d | 0d |  | Electrician Crew 5 person [200 h] |  |
| A104 |  | Electrical Wall Cutting pipe fitting FF | 5d | 2026-10-20 | 2026-10-28 | A287 | 29d | 0d |  | Electrician Crew 5 person [200 h] |  |
| A124 |  | Electrical_wiring_GF | 5d | 2026-10-20 | 2026-10-28 | A487 | 71d |  |  | Electrician Crew 5 person [200 h] |  |
| A114 |  | Electrical_wall_cutting_pipe fitting_SF | 5d | 2026-12-28 | 2027-01-05 | A387 | 0d |  |  | Electrician Crew 5 person [200 h] |  |
| A134 |  | Electrical_wiring_FF | 5d | 2026-12-28 | 2027-01-05 | A497 | 29d |  |  | Electrician Crew 5 person [200 h] |  |
| A144 |  | Electrical_wiring_SF | 5d | 2027-02-10 | 2027-02-18 | A507 | 0d |  |  | Electrician Crew 5 person [200 h] |  |
| A154 |  | Electrical_fitings | 2d | 2027-03-22 | 2027-03-24 | A517, A527, A537, A547 | 1.8d |  |  | Electrician Crew 5 person [80 h] |  |

| ID | WBS | Activity | Duration | Start | Finish | Predecessors | Total float | Free float | Calendar | Resources |
| --- | --- | --- | --- | --- | --- | --- | --- | --- | --- | --- |
|  | 5 | **Plumbing_work** |  | 2026-09-16 | 2027-03-25 |  |  |  |  |  |
| A1000 |  | Plumbing_Pipe_fiting_GF | 1d | 2026-09-16 | 2026-09-17 | A407 FS+5d | 71d | 0d |  | Plumbing -crew 4 person [32 h] |
| A1010 |  | Plumbing_pipe_fitting_FF | 1d | 2026-11-24 | 2026-11-25 | A417 FS+5d | 29d | 0d |  | Plumbing -crew 4 person [32 h] |
| A1020 |  | Plumbing_pipe_fitting_SF | 1d | 2027-01-22 | 2027-01-25 | A427 FS+5d, A1090 FF, A1080 FF | 0d |  |  | Plumbing -crew 4 person [32 h] |
| A1070 |  | Plumbing_fittings | 3d | 2027-03-22 | 2027-03-25 | A517, A527, A537 | 1d |  | Guardsroom | Plumbing -crew 4 person [128 h] |
|  | 6 | **Flooring_work** |  | 2026-10-28 | 2027-03-08 |  |  |  |  |  |
| A1030 |  | Floor_finish_FF | 2d | 2026-10-28 | 2026-11-02 | A104 | 29d | 0d |  | Mate [32 h]; Mazdoor_H1 [32 h] |
| A1050 |  | Toilet_floor_finish_FF | 1d | 2026-11-25 | 2026-11-26 | A1010 | 29d | 0d |  | Mate [8 h]; Mazdoor_H1 [8 h] |
| A1040 |  | Floor_finish_SF | 2d | 2027-01-05 | 2027-01-07 | A114 | 0d |  |  | Mate [24 h]; Mazdoor_H1 [24 h] |
| A1060 |  | Toilet_floor_finish_SF | 1d | 2027-01-25 | 2027-01-26 | A1020 | 0d |  |  | Mate [8 h]; Mazdoor_H1 [8 h] |
| A075 |  | Flooring in SF | 3d | 2027-02-19 | 2027-02-24 | A507, A144 | 0d |  |  | Bhisti [24 h]; Mate [24 h]; Mazdoor_H1 [24 h] |
| A074 |  | Flooring in FF | 3d | 2027-02-24 | 2027-03-02 | A497, A075, A134 | 0d |  |  | Bhisti [24 h]; Mate [24 h]; Mazdoor_H1 [24 h] |
| A073 |  | Flooring in GF | 3d | 2027-03-02 | 2027-03-08 | A487, A074, A124 | 0d |  |  | Mate [24 h]; Mazdoor_H1 [24 h]; Bhisti [24 h] |
|  | 8 | **Ground_works** |  | 2026-09-16 | 2026-09-21 |  |  |  |  |  |
| A1080 |  | Septic_tank | 2d | 2026-09-16 | 2026-09-21 | A1000 SS | 72d |  |  | Plumbing -crew 4 person [64 h]; Mate [16 h]; Mazdoor_H1 [16 h] |
| A1090 |  | Wastewater_tank | 2d | 2026-09-16 | 2026-09-21 | A1000 SS | 72d |  |  | Mazdoor_H1 [16 h]; Mate [16 h] |
